# Software Development

Schedule from MS Project, 2018-08-24 to 2018-11-15, A marks actual dates.

## Calendars

- Standard: Mon-Fri 08:00-12:00, 13:00-17:00; Sat-Sun off. Exceptions (off unless hours are given): 2018-09-01 08:00-12:00, 13:00-17:00.

## Resources

| Resource |
| --- |
| Scott |
| Janet |
| Owners |

## Schedule

| ID | WBS | Task | Type | Duration | Start | Finish | Predecessors | Complete | Remaining | Actual finish | Total slack | Free slack | Resources | Work | Actual work |
| --- | --- | --- | --- | --- | --- | --- | --- | --- | --- | --- | --- | --- | --- | --- | --- |
| 1 | 1 | **Scope** |  | 7d | 2018-08-24 08:00 A | 2018-09-01 17:00 |  | 100% |  | 2018-08-24 11:30 |  |  |  |  |  |
| 2 | 1.1 | Formulate initial questions |  | 2h | 2018-08-24 08:00 A | 2018-08-24 10:00 A |  | 100% |  |  |  |  |  |  |  |
| 3 | 1.2 | Meet with Customers |  | 2h | 2018-08-24 08:00 A | 2018-08-24 10:00 A |  | 100% |  |  |  |  |  |  |  |
| 4 | 1.3 | Review Answers & write concept description |  | 1.5h | 2018-08-24 10:00 A | 2018-08-24 11:30 A | 3 | 100% |  |  |  |  |  |  |  |
| 5 | 1.4 | Scope complete | milestone | 0d | 2018-08-24 11:30 A | 2018-08-24 11:30 A | 4 | 100% |  |  |  |  |  |  |  |
| 6 | 2 | **Analysis/Software Requirements** |  | 9.5d | 2018-08-29 13:00 A | 2018-09-10 17:00 |  | 99% | 0d |  |  |  |  | 15.5h | 15.5h |
| 7 | 2.1 | Conduct second customer meeting |  | 2h | 2018-08-29 13:00 A | 2018-08-29 15:00 A | 5 | 100% |  |  |  |  | Janet; Scott | 4h | 4h |
| 8 | 2.2 | Create code repositiory |  | 0.25h | 2018-08-29 15:00 A | 2018-08-29 15:15 A | 7 | 100% |  |  |  |  | Scott; Janet | 0.5h | 0.5h |
| 9 | 2.3 | Make virtual prototype |  | 5h | 2018-08-29 15:15 A | 2018-08-30 11:15 A | 8 | 100% |  |  |  |  | Janet | 5h | 5h |
| 10 | 2.4 | Present consept/ requirements & receive feedback |  | 0.5h | 2018-08-30 11:15 A | 2018-08-30 11:45 A | 9 | 100% |  |  |  |  | Janet; Scott | 1h | 1h |
| 11 | 2.5 | Creat Intial project timeline |  | 2.5h | 2018-08-30 11:45 A | 2018-08-30 15:15 A | 10 | 100% |  |  |  |  | Janet; Scott | 5h | 5h |
| 12 | 2.6 | Analysis complete | milestone | 0d | 2018-08-30 15:15 | 2018-08-30 15:15 | 11 |  |  |  | 7.22d |  |  |  |  |
| 13 | 3 | **Design** |  | 14d | 2018-09-10 08:00 A | 2018-09-27 17:00 | 6 | 92% | 1.11d |  |  |  |  | 39h | 35h |
| 14 | 3.1 | Develop functional specifications |  | 2d | 2018-09-10 08:00 A | 2018-09-11 17:00 A |  | 100% |  |  |  |  | Janet | 16h | 16h |
| 15 | 3.2 | make UML diagrams |  | 4h | 2018-09-12 08:00 A | 2018-09-12 12:00 A | 14 | 100% |  |  |  |  | Janet | 4h | 4h |
| 16 | 3.3 | make use case diagram |  | 2h | 2018-09-12 13:00 | 2018-09-12 15:00 | 15 |  |  |  | 46.25d |  | Janet; Scott | 4h |  |
| 17 | 3.4 | Develop prototype based on functional specifications |  | 9h | 2018-09-12 15:00 A | 2018-09-13 16:00 A | 16 | 100% |  |  |  |  | Scott | 9h | 9h |
| 18 | 3.5 | Review functional specifications |  | 0.67h | 2018-09-13 16:00 A | 2018-09-13 16:40 A | 17 | 100% |  |  |  |  | Janet; Scott; Owners | 2h | 2h |
| 19 | 3.6 | Incorporate feedback into functional specifications |  | 2h | 2018-09-13 16:40 A | 2018-09-14 09:40 A | 18 | 100% |  |  |  |  | Janet; Scott | 4h | 4h |
| 20 | 3.7 | Obtain approval to proceed |  | 4h | 2018-09-14 09:40 A | 2018-09-14 14:40 | 19 | 75% | 1h |  | 35.29d | 0d |  |  |  |
| 21 | 3.8 | Design complete | milestone | 0d | 2018-09-14 14:40 | 2018-09-14 14:40 | 20 |  |  |  | 35.29d | 27.29d |  |  |  |
| 22 | 4 | **Development** |  | 20d | 2018-09-27 08:00 A | 2018-10-24 17:00 |  | 19% | 16.25d |  |  |  |  | 160h | 30h |
| 23 | 4.1 | Develop code |  | 7.5d | 2018-09-27 08:00 A | 2018-10-08 12:00 |  | 25% | 5.62d |  | 21d | 0d | Janet; Scott | 120h | 30h |
| 24 | 4.2 | Developer testing (primary debugging) |  | 2.5d | 2018-10-08 13:00 | 2018-10-10 17:00 | 23FS-7.5% |  |  |  | 23d | 0d | Janet; Scott | 40h |  |
| 25 | 4.3 | Development complete | milestone | 0d | 2018-10-10 17:00 | 2018-10-10 17:00 | 24 |  |  |  | 23d |  |  |  |  |

| ID | WBS | Task | Type | Duration | Start | Finish | Predecessors | Total slack | Free slack | Resources | Work |
| --- | --- | --- | --- | --- | --- | --- | --- | --- | --- | --- | --- |
| 26 | 5 | **Testing** |  | 7d | 2018-10-24 08:00 | 2018-11-01 17:00 | 22 |  |  |  | 56h |
| 27 | 5.1 | Off site testing |  | 2d | 2018-10-24 08:00 | 2018-10-25 17:00 |  | 15d |  | Janet; Scott | 32h |
| 28 | 5.2 | On site testing |  | 2d | 2018-10-24 08:00 | 2018-10-26 17:00 | 21 | 14d |  | Owners; Janet; Scott | 24h |
| 29 | 6 | **Training** |  | 7d | 2018-11-01 08:00 | 2018-11-09 17:00 |  |  |  |  | 48h |
| 30 | 6.1 | Develop training plan and documents |  | 3d | 2018-11-01 08:00 | 2018-11-05 17:00 | 21 | 8d |  | Scott | 24h |
| 31 | 6.2 | Train Owners |  | 2d? | 2018-11-05 08:00 | 2018-11-09 17:00 |  | 4d |  | Janet; Scott | 16h |
| 32 | 6.3 | Implement first half of training with staff |  | 1d | 2018-11-06 08:00 | 2018-11-12 12:00 | 21 | 3.5d |  | Janet; Scott | 8h |
| 33 | 7 | **Documentation** |  | 7d | 2018-11-01 08:00 | 2018-11-09 17:00 |  |  |  |  | 56h |
| 34 | 7.1 | Develop Help system |  | 3d | 2018-11-06 08:00 | 2018-11-08 17:00 | 23FS-5% | 5d |  | Scott | 24h |
| 35 | 7.2 | Review all user documentation |  | 2d | 2018-11-01 08:00 | 2018-11-02 17:00 |  | 6d | 0d | Janet | 16h |
| 36 | 7.3 | Incorporate user documentation feedback |  | 2d | 2018-11-06 13:00 | 2018-11-08 12:00 | 35 | 5.5d | 0d | Janet | 16h |
| 37 | 7.4 | Documentation complete | milestone | 0d | 2018-11-08 12:00 | 2018-11-08 12:00 | 36 | 5.5d |  |  |  |
| 38 | 8 | **Deployment** |  | 5d | 2018-11-09 08:00 | 2018-11-15 17:00 |  |  |  |  |  |
| 39 | 8.1 | Determine final deployment strategy |  | 2h | 2018-11-09 08:00 | 2018-11-09 10:00 |  | 0.25d | 0d |  |  |
| 40 | 8.2 | Develop deployment methodology |  | 1d | 2018-11-09 10:00 | 2018-11-12 10:00 | 39 | 0.25d | 0d |  |  |
| 41 | 8.3 | Secure deployment resources |  | 1d | 2018-11-12 10:00 | 2018-11-13 10:00 | 40 | 0.25d | 0d |  |  |
| 42 | 8.4 | Train support staff |  | 4h | 2018-11-13 10:00 | 2018-11-13 15:00 | 41 | 0.25d | 0d |  |  |
| 43 | 8.5 | Deploy software |  | 1d | 2018-11-13 15:00 | 2018-11-14 15:00 | 42 | 0.25d | 0d |  |  |
| 44 | 8.6 | Deployment complete | milestone | 0d | 2018-11-14 15:00 | 2018-11-14 15:00 | 43 | 0.25d |  |  |  |
| 45 | 9 | **Post Implementation Review** |  | 1d | 2018-11-15 08:00 | 2018-11-15 17:00 |  |  |  |  |  |
| 46 | 9.1 | Document lessons learned |  | 1d | 2018-11-15 08:00 | 2018-11-15 17:00 | 44 | 0d |  |  |  |
| 47 | 9.2 | Post implementation review complete | milestone | 0d | 2018-11-15 17:00 | 2018-11-15 17:00 | 46 | 0d |  |  |  |
| 48 | 10 | Software development template complete | milestone | 0d | 2018-11-15 17:00 | 2018-11-15 17:00 | 47 | 0d |  |  |  |
